# sdmcv

Schedule from MS Project, 2008-03-24 to 2008-07-20, costs in $.
HOME

## Calendars

- MyCalendar: Mon-Fri 08:00-12:00, 13:00-17:00; Sat-Sun off.

## Resources

| Resource | Group | Rate |
| --- | --- | --- |
| A | PM | 150 |
| B | Dev | 100 |
| C | Coder | 80 |
| D | Coder | 80 |
| E | Coder | 80 |
| F | Tester | 60 |

## Schedule

| ID | WBS | Task | Duration | Start | Finish | Predecessors | Total slack | Free slack | Constraint | Resources | Work | Cost |
| --- | --- | --- | --- | --- | --- | --- | --- | --- | --- | --- | --- | --- |
| 1 | 1 | **Xây dựng phần mềm quản lý cho trung tâm tin học** | 85d | 2008-03-24 | 2008-07-18 |  | 0d |  |  |  | 1232h | 483,009,080 |
| 2 | 1.1 | **Xác định dự án** | 8d | 2008-03-24 | 2008-04-02 |  | 5d |  |  |  | 44h | 7,206,600 |
| 3 | 1.1.1 | Nhận dự án | 0.5d | 2008-03-24 | 2008-03-24 |  | 12d | 0d |  | A | 4h | 600 |
| 4 | 1.1.2 | Khảo sát hiện trạng | 0.5d | 2008-03-24 | 2008-03-24 | 3 | 12d | 0d |  | A | 4h | 600 |
| 5 | 1.1.3 | Xác định yêu cầu | 1d | 2008-03-25 | 2008-03-25 | 4 | 14.5d | 4.5d | start no earlier than 2008-03-25 | A | 8h | 1,200 |
| 6 | 1.1.4 | Xác định chức năng | 1d | 2008-03-26 | 2008-03-26 | 4 | 13.5d | 3.5d | start no earlier than 2008-03-26 | A | 8h | 1,200 |
| 7 | 1.1.5 | Xác định rủi ro | 1d | 2008-03-31 | 2008-03-31 | 4 | 10d | 0d | start no earlier than 2008-03-31 | A | 8h | 1,200 |
| 8 | 1.1.6 | Tính toán ngân sách | 0.5d | 2008-04-01 | 2008-04-01 | 7 | 10d | 0d |  |  |  |  |
| 9 | 1.1.7 | Lên kế hoạch dự án | 1d | 2008-04-01 | 2008-04-02 | 6, 5, 8 | 10d | 0d |  | A | 8h | 1,200 |
| 10 | 1.1.8 | Công bố dự án | 0.5d | 2008-04-02 | 2008-04-02 | 9 | 10d | 2d |  | A | 4h | 600 |
| 11 | 1.2 | **Quản lý dự án** | 68d | 2008-04-07 | 2008-07-09 | 10 | 5d |  |  |  | 336h | 50,450,400 |
| 12 | 1.2.1 | Quản lý giai đoạn nghiên cứu yêu cầu | 9d | 2008-04-07 | 2008-04-23 |  | 10d | 2d | finish no earlier than 2008-04-23 | A | 72h | 10,800 |
| 13 | 1.2.2 | Quản lý giai đoạn thiết kế hệ thống | 12d | 2008-04-28 | 2008-05-21 | 12 | 10d | 2d |  | A | 96h | 14,400 |
| 14 | 1.2.3 | Quản lý giai đoạn xây dựng hệ thống | 15d | 2008-05-26 | 2008-06-25 | 13 | 10d | 2d |  | A | 120h | 18,000 |
| 15 | 1.2.4 | Quản lý giai đoạn triển khai hệ thống | 6d | 2008-06-30 | 2008-07-09 | 14 | 10d |  |  | A | 48h | 7,200 |
| 16 | 1.3 | **Thực hiện dự án** | 75d | 2008-04-07 | 2008-07-18 | 10 | 0d |  |  |  | 852h | 245,192,080 |
| 17 | 1.3.1 | **Nghiên cứu yêu cầu** | 15d | 2008-04-07 | 2008-04-26 |  | 29d |  |  |  | 132h | 12,013,200 |
| 18 | 1.3.1.1 | Phân tích yêu cầu | 2d | 2008-04-07 | 2008-04-08 |  | 33.5d | 0d | start no earlier than 2008-04-07 | B | 16h | 1,600 |
| 19 | 1.3.1.2 | Thiết kế prototype lần 1 | 1d | 2008-04-09 | 2008-04-09 | 18 | 33.5d | 0d |  | B | 8h | 800 |
| 20 | 1.3.1.3 | Xây dựng prototype lần 1 | 1d | 2008-04-10 | 2008-04-10 | 19 | 33.5d | 0d |  | B | 8h | 800 |
| 21 | 1.3.1.4 | Nhận đánh giá của khách hàng lần 1 | 1d | 2008-04-11 | 2008-04-11 | 20 | 33.5d | 0d |  | B | 8h | 800 |
| 22 | 1.3.1.5 | Thiết kế prototype lần 2 | 2d | 2008-04-14 | 2008-04-15 | 21 | 33d | 0d | start no earlier than 2008-04-14 | B | 16h | 1,600 |
| 23 | 1.3.1.6 | Xây dựng prototype lần 2 | 2d | 2008-04-16 | 2008-04-17 | 22 | 33d | 0d |  | B | 16h | 1,600 |
| 24 | 1.3.1.7 | Nhận đánh giá của khách hàng lần 2 | 1d | 2008-04-18 | 2008-04-18 | 23 | 33d | 0d |  | B | 8h | 800 |
| 25 | 1.3.1.8 | Thiết kế prototype lần 3 | 2d | 2008-04-21 | 2008-04-22 | 24 | 33d | 0d | start no earlier than 2008-04-21 | B | 16h | 1,600 |
| 26 | 1.3.1.9 | Xây dựng prototype lần 3 | 2d | 2008-04-23 | 2008-04-24 | 25 | 32.5d | 0d |  | B | 16h | 1,600 |
| 27 | 1.3.1.10 | Nhận đánh giá của khách hàng lần 3 | 1d | 2008-04-25 | 2008-04-25 | 26 | 32.5d | 0d |  | B | 8h | 800 |

| ID | WBS | Task | Duration | Start | Finish | Predecessors | Total slack | Free slack | Constraint | Resources | Work | Cost |
| --- | --- | --- | --- | --- | --- | --- | --- | --- | --- | --- | --- | --- |
| 28 | 1.3.1.11 | **Hoàn chỉnh các yêu cầu của dự án** | 10d | 2008-04-12 | 2008-04-26 |  | 60d |  |  |  | 12h | 1,200 |
| 29 | 1.3.1.11.1 | Hoàn chỉnh các yêu cầu của dự án 1 | 0.5d | 2008-04-12 | 2008-04-12 |  | 74.5d |  | start no earlier than 2008-04-12 | B | 4h | 400 |
| 30 | 1.3.1.11.2 | Hoàn chỉnh các yêu cầu của dự án 2 | 0.5d | 2008-04-19 | 2008-04-19 |  | 69.5d |  | start no earlier than 2008-04-19 | B | 4h | 400 |
| 31 | 1.3.1.11.3 | Hoàn chỉnh các yêu cầu của dự án 3 | 0.5d | 2008-04-26 | 2008-04-26 |  | 64.5d |  | start no earlier than 2008-04-26 | B | 4h | 400 |
| 32 | 1.3.2 | **Thiết kế hệ thống** | 20d | 2008-04-28 | 2008-05-23 | 27 | 27.5d |  |  |  | 160h | 16,016,000 |
| 33 | 1.3.2.1 | Thiết kế cơ sở dữ liệu | 5.5d | 2008-04-28 | 2008-05-03 |  | 32.5d | 0d | start no earlier than 2008-04-28 | B | 44h | 4,400 |
| 34 | 1.3.2.2 | Thiết kế màn hình quản lý lớp học | 1d | 2008-05-05 | 2008-05-05 | 33 | 59d |  |  | B | 8h | 800 |
| 35 | 1.3.2.3 | **Thiết kế màn hình quản lý nhân sự** | 3d | 2008-05-06 | 2008-05-08 | 33 | 26d | 7d |  |  | 24h | 2,400 |
| 36 | 1.3.2.3.1 | Thiết kế màn hình quản lý học viên | 1d | 2008-05-06 | 2008-05-06 |  | 31.5d | 0d | start no earlier than 2008-05-06 | B | 8h | 800 |
| 37 | 1.3.2.3.2 | Thiết kế màn hình quản lý giảng viên | 1d | 2008-05-07 | 2008-05-07 | 36 | 31.5d | 0d |  | B | 8h | 800 |
| 38 | 1.3.2.3.3 | Thiết kế màn hình quản lý nhân viên | 1d | 2008-05-08 | 2008-05-08 | 37 | 31d |  |  | B | 8h | 800 |
| 39 | 1.3.2.4 | Thiết kế màn hình quản lý tài nguyên, thiết bị | 1d | 2008-05-09 | 2008-05-09 | 33 | 29.5d | 1d | start no earlier than 2008-05-09 | B | 8h | 800 |
| 40 | 1.3.2.5 | Thiết kế màn hình tiếp nhận thông tin đăng ký | 1d | 2008-05-12 | 2008-05-12 |  | 29d | 5d | start no earlier than 2008-05-12 | B | 8h | 800 |
| 41 | 1.3.2.6 | Thiết kế màn hình quản lý tài chính | 1d | 2008-05-13 | 2008-05-13 | 39 | 28d | 4d | start no earlier than 2008-05-13 | B | 8h | 800 |
| 42 | 1.3.2.7 | **Thiết kế các biểu mẫu** | 3.5d | 2008-05-14 | 2008-05-19 |  | 28d | 4.5d |  |  | 28h | 2,800 |
| 43 | 1.3.2.7.1 | Danh sách lớp học | 0.5d | 2008-05-14 | 2008-05-14 |  | 32.5d | 0d | start no earlier than 2008-05-14 | B | 4h | 400 |
| 44 | 1.3.2.7.2 | Danh sách học viên | 0.5d | 2008-05-14 | 2008-05-14 | 43 | 32.5d | 0d |  | B | 4h | 400 |
| 45 | 1.3.2.7.3 | Danh sách giảng viên | 0.5d | 2008-05-15 | 2008-05-15 | 44 | 32.5d | 5.5d |  | B | 4h | 400 |
| 46 | 1.3.2.7.4 | Danh sách nhân viên | 0.5d | 2008-05-16 | 2008-05-16 | 45 | 32d | 0d | start no earlier than 2008-05-16 | B | 4h | 400 |
| 47 | 1.3.2.7.5 | Hóa đơn học phí của học viên | 0.5d | 2008-05-16 | 2008-05-16 | 46 | 32d | 0d |  | B | 4h | 400 |
| 48 | 1.3.2.7.6 | Bảng lương của giảng viên và nhân viên | 0.5d | 2008-05-17 | 2008-05-17 | 47 | 32d | 0d |  | B | 4h | 400 |
| 49 | 1.3.2.7.7 | Báo cáo tài chính hằng tháng của trung tâm | 0.5d | 2008-05-19 | 2008-05-19 | 48 | 32.5d |  |  | B | 4h | 400 |
| 50 | 1.3.2.8 | Thiết kế xử lý | 4d | 2008-05-20 | 2008-05-23 | 35, 40, 41 | 19d | 0d | finish no earlier than 2008-05-23 | B | 32h | 3,200 |
| 51 | 1.3.3 | **Xây dựng hệ thống** | 25d | 2008-05-26 | 2008-06-29 | 50 | 15d |  |  |  | 480h | 77,637,120 |
| 52 | 1.3.3.1 | Xây dựng màn hình quản lý lớp học | 5d | 2008-05-26 | 2008-05-30 | 50 | 28d | 5d | start no earlier than 2008-05-26 | C | 40h | 3,200 |

| ID | WBS | Task | Duration | Start | Finish | Predecessors | Total slack | Free slack | Constraint | Resources | Work | Cost |
| --- | --- | --- | --- | --- | --- | --- | --- | --- | --- | --- | --- | --- |
| 53 | 1.3.3.2 | **Xây dựng màn hình quản lý nhân sự** | 5d | 2008-06-02 | 2008-06-06 | 52 | 22.5d | 15d |  |  | 120h | 9,600 |
| 54 | 1.3.3.2.1 | Xây dựng màn hình quản lý học viên | 5d | 2008-06-02 | 2008-06-06 |  | 27.5d |  | start no earlier than 2008-06-02 | C | 40h | 3,200 |
| 55 | 1.3.3.2.2 | Xây dựng màn hình quản lý giảng viên | 5d | 2008-06-02 | 2008-06-06 |  | 27.5d |  | start no earlier than 2008-06-02 | D | 40h | 3,200 |
| 56 | 1.3.3.2.3 | Xây dựng màn hình quản lý nhân viên | 5d | 2008-06-02 | 2008-06-06 |  | 27.5d |  | start no earlier than 2008-06-02 | E | 40h | 3,200 |
| 57 | 1.3.3.3 | Xây dựng màn hình quản lý tài nguyên, thiết bị | 5d | 2008-06-09 | 2008-06-13 |  | 13.5d | 0d | start no earlier than 2008-06-09 | C | 40h | 3,200 |
| 58 | 1.3.3.4 | Xây dựng màn hình tiếp nhận thông tin đăng ký | 5d | 2008-06-16 | 2008-06-20 | 57 | 13d | 5d | start no earlier than 2008-06-16 | D | 40h | 3,200 |
| 59 | 1.3.3.5 | Xây dựng màn hình quản lý tài chính | 5d | 2008-06-23 | 2008-06-27 | 58 | 7.5d | 0d | start no earlier than 2008-06-23 | E | 40h | 3,200 |
| 60 | 1.3.3.6 | Xây dựng các biểu mẫu | 5d | 2008-05-26 | 2008-05-30 | 42 | 27.5d | 10d | start no earlier than 2008-05-26 | D | 40h | 3,200 |
| 61 | 1.3.3.7 | Xây dựng diễn đàn | 5d | 2008-06-09 | 2008-06-13 | 60 | 17.5d | 10d | start no earlier than 2008-06-09 | E | 40h | 3,200 |
| 62 | 1.3.3.8 | **Kiểm tra hệ thống** | 20d | 2008-05-31 | 2008-06-29 |  | 10d |  |  |  | 80h | 4,800 |
| 63 | 1.3.3.8.1 | Kiểm tra hệ thống 1 | 1d | 2008-05-31 | 2008-05-31 |  | 35d |  | start no earlier than 2008-05-31 | F | 8h | 480 |
| 64 | 1.3.3.8.2 | Kiểm tra hệ thống 2 | 1d | 2008-06-01 | 2008-06-01 |  | 35d |  | start no earlier than 2008-06-01 | F | 8h | 480 |
| 65 | 1.3.3.8.3 | Kiểm tra hệ thống 3 | 1d | 2008-06-07 | 2008-06-07 |  | 30d |  | start no earlier than 2008-06-07 | F | 8h | 480 |
| 66 | 1.3.3.8.4 | Kiểm tra hệ thống 4 | 1d | 2008-06-08 | 2008-06-08 |  | 30d |  | start no earlier than 2008-06-08 | F | 8h | 480 |
| 67 | 1.3.3.8.5 | Kiểm tra hệ thống 5 | 1d | 2008-06-14 | 2008-06-14 |  | 25d |  | start no earlier than 2008-06-14 | F | 8h | 480 |
| 68 | 1.3.3.8.6 | Kiểm tra hệ thống 6 | 1d | 2008-06-15 | 2008-06-15 |  | 25d |  | start no earlier than 2008-06-15 | F | 8h | 480 |
| 69 | 1.3.3.8.7 | Kiểm tra hệ thống 7 | 1d | 2008-06-21 | 2008-06-21 |  | 20d |  | start no earlier than 2008-06-21 | F | 8h | 480 |
| 70 | 1.3.3.8.8 | Kiểm tra hệ thống 8 | 1d | 2008-06-22 | 2008-06-22 |  | 20d |  | start no earlier than 2008-06-22 | F | 8h | 480 |
| 71 | 1.3.3.8.9 | Kiểm tra hệ thống 9 | 1d | 2008-06-28 | 2008-06-28 |  | 15d |  | start no earlier than 2008-06-28 | F | 8h | 480 |
| 72 | 1.3.3.8.10 | Kiểm tra hệ thống 10 | 1d | 2008-06-29 | 2008-06-29 |  | 15d |  | start no earlier than 2008-06-29 | F | 8h | 480 |
| 73 | 1.3.3.9 | **Xây dựng tài liệu hướng dẫn sử dụng** | 21d | 2008-05-30 | 2008-06-27 |  | 15d |  |  |  | 40h | 3,520 |
| 74 | 1.3.3.9.1 | Xây dựng tài liệu hướng dẫn sử dụng 1 | 1d | 2008-05-30 | 2008-05-30 |  | 40d |  | start no earlier than 2008-05-30 | B | 8h | 800 |
| 75 | 1.3.3.9.2 | Xây dựng tài liệu hướng dẫn sử dụng 2 | 1d | 2008-06-06 | 2008-06-06 |  | 35d |  | start no earlier than 2008-06-06 | B | 8h | 800 |
| 76 | 1.3.3.9.3 | Xây dựng tài liệu hướng dẫn sử dụng 3 | 1d | 2008-06-13 | 2008-06-13 |  | 30d |  | start no earlier than 2008-06-13 | D | 8h | 640 |
| 77 | 1.3.3.9.4 | Xây dựng tài liệu hướng dẫn sử dụng 4 | 1d | 2008-06-20 | 2008-06-20 |  | 25d |  | start no earlier than 2008-06-20 | E | 8h | 640 |
| 78 | 1.3.3.9.5 | Xây dựng tài liệu hướng dẫn sử dụng 5 | 1d | 2008-06-27 | 2008-06-27 |  | 20d |  | start no earlier than 2008-06-27 | C | 8h | 640 |

| ID | WBS | Task | Type | Duration | Start | Finish | Predecessors | Total slack | Free slack | Constraint | Resources | Work | Cost |
| --- | --- | --- | --- | --- | --- | --- | --- | --- | --- | --- | --- | --- | --- |
| 79 | 1.3.4 | **Triển khai hệ thống** |  | 15d | 2008-06-30 | 2008-07-18 | 61, 59, 53 | 0d |  |  |  | 80h | 16,965,760 |
| 80 | 1.3.4.1 | Cài đặt hệ thống |  | 3d | 2008-06-30 | 2008-07-02 |  | 11d | 2d | start no earlier than 2008-06-30 | C | 24h | 1,920 |
| 81 | 1.3.4.2 | **Kiểm tra hệ thống** |  | 5d | 2008-07-05 | 2008-07-13 | 80 | 5d |  |  |  | 32h | 1,920 |
| 82 | 1.3.4.2.1 | Kiểm tra hệ thống 1 |  | 1d | 2008-07-05 | 2008-07-05 |  | 10d |  | start no earlier than 2008-07-05 | F | 8h | 480 |
| 83 | 1.3.4.2.2 | Kiểm tra hệ thống 2 |  | 1d | 2008-07-06 | 2008-07-06 |  | 10d |  | start no earlier than 2008-07-06 | F | 8h | 480 |
| 84 | 1.3.4.2.3 | Kiểm tra hệ thống 3 |  | 1d | 2008-07-12 | 2008-07-12 |  | 5d |  | start no earlier than 2008-07-12 | F | 8h | 480 |
| 85 | 1.3.4.2.4 | Kiểm tra hệ thống 4 |  | 1d | 2008-07-13 | 2008-07-13 |  | 5d |  | start no earlier than 2008-07-13 | F | 8h | 480 |
| 86 | 1.3.4.3 | **Huấn luyện người dùng** |  | 9d | 2008-07-07 | 2008-07-17 | 80 | 1d |  |  |  |  |  |
| 87 | 1.3.4.3.1 | Huấn luyện người dùng 1 |  | 1d | 2008-07-07 | 2008-07-07 |  | 9d |  | start no earlier than 2008-07-07 |  |  |  |
| 88 | 1.3.4.3.2 | Huấn luyện người dùng 2 |  | 1d | 2008-07-08 | 2008-07-08 |  | 8d |  | start no earlier than 2008-07-08 |  |  |  |
| 89 | 1.3.4.3.3 | Huấn luyện người dùng 3 |  | 1d | 2008-07-09 | 2008-07-09 |  | 7d |  | start no earlier than 2008-07-09 |  |  |  |
| 90 | 1.3.4.3.4 | Huấn luyện người dùng 4 |  | 1d | 2008-07-10 | 2008-07-10 |  | 6d |  | start no earlier than 2008-07-10 |  |  |  |
| 91 | 1.3.4.3.5 | Huấn luyện người dùng 5 |  | 1d | 2008-07-14 | 2008-07-14 |  | 4d |  | start no earlier than 2008-07-14 |  |  |  |
| 92 | 1.3.4.3.6 | Huấn luyện người dùng 6 |  | 1d | 2008-07-15 | 2008-07-15 |  | 3d |  | start no earlier than 2008-07-15 |  |  |  |
| 93 | 1.3.4.3.7 | Huấn luyện người dùng 7 |  | 1d | 2008-07-16 | 2008-07-16 |  | 2d |  | start no earlier than 2008-07-16 |  |  |  |
| 94 | 1.3.4.3.8 | Huấn luyện người dùng 8 |  | 1d | 2008-07-17 | 2008-07-17 |  | 1d |  | start no earlier than 2008-07-17 |  |  |  |
| 95 | 1.3.4.4 | **Hỗ trợ kỹ thuật** |  | 11d | 2008-07-04 | 2008-07-18 |  | 0d |  |  |  | 24h | 1,920 |
| 96 | 1.3.4.4.1 | Hỗ trợ kỹ thuật 1 |  | 1d | 2008-07-04 | 2008-07-04 |  | 10d |  | start no earlier than 2008-07-04 | C | 8h | 640 |
| 97 | 1.3.4.4.2 | Hỗ trợ kỹ thuật 2 |  | 1d | 2008-07-11 | 2008-07-11 |  | 5d |  | start no earlier than 2008-07-11 | D | 8h | 640 |
| 98 | 1.3.4.4.3 | Hỗ trợ kỹ thuật 3 |  | 1d | 2008-07-18 | 2008-07-18 |  | 0d |  | start no earlier than 2008-07-18 | E | 8h | 640 |
| 99 | 2 | Kết thúc dự án | milestone | 0d | 2008-07-20 | 2008-07-20 | 15, 86, 81, 95 | 0d |  | start no earlier than 2008-07-20 |  |  |  |
