# KTMT_LWF

Schedule from MS Project, 2016-02-15 to 2016-05-15, status date 2016-05-03, costs in ₫, A marks actual dates.

## Calendars

- MyCalender: Mon-Fri 08:00-12:00, 13:00-17:00; Sat-Sun off. Exceptions (off unless hours are given): 2016-04-02 08:00-12:00, 13:00-17:00.

## Resources

| Resource | Rate |
| --- | --- |
| Nguyễn Trần Tiến Đạt | 30 |
| Nguyễn Văn Bông | 30 |
| Hồ Quí Đầy | 30 |
| Phan Đức Anh | 30 |
| Trần Liêu Phước Hải | 30 |
| Giấy | 15 |
| Thiết bị | 600 |
| Chi phí khác | 100 |
| Nguyễn Minh Chánh | 30 |
| Chi phí sửa mạch | 500 |

## Schedule

| ID | WBS | Task | Type | Duration | Start | Finish | Predecessors | Complete | Remaining | Actual start | Actual finish | Baseline start | Baseline finish | Baseline duration | Constraint | Resources | Work | Actual work | Cost | Actual cost |
| --- | --- | --- | --- | --- | --- | --- | --- | --- | --- | --- | --- | --- | --- | --- | --- | --- | --- | --- | --- | --- |
| 1 | 1 | **Local Weather Forecast** |  | 67d | 2016-02-15 08:00 A | 2016-05-15 17:00 |  | 88% | 8.05d |  |  |  |  |  |  |  | 1602h | 1303h | 55,667.5 | 45,445.8 |
| 2 | 1.1 | **Meeting Report** |  | 62d | 2016-02-16 08:00 A | 2016-05-10 17:00 |  |  | 62d |  |  | 2016-02-16 08:00 | 2016-05-10 17:00 | 62d |  |  | 55h |  | 1,800 |  |
| 3 | 1.1.1 | Meeting Report 1 | manual | 1h | 2016-02-16 08:00 A | 2016-02-16 09:00 |  |  | 1h |  |  |  |  |  | start no earlier than 2016-02-16 08:00 | Hồ Quí Đầy; Nguyễn Trần Tiến Đạt; Nguyễn Văn Bông; Phan Đức Anh; Trần Liêu Phước Hải; Giấy | 5h |  | 165 |  |
| 4 | 1.1.2 | Meeting Report 2 | manual | 1h | 2016-02-23 08:00 A | 2016-02-23 09:00 |  |  | 1h |  |  |  |  |  | start no earlier than 2016-02-23 08:00 | Hồ Quí Đầy; Nguyễn Trần Tiến Đạt; Phan Đức Anh; Trần Liêu Phước Hải; Nguyễn Văn Bông; Giấy | 5h |  | 150 |  |
| 5 | 1.1.3 | Meeting Report 3 | manual | 1h | 2016-03-01 08:00 A | 2016-03-01 09:00 |  |  | 1h |  |  |  |  |  | start no earlier than 2016-03-01 08:00 | Nguyễn Trần Tiến Đạt; Nguyễn Văn Bông; Trần Liêu Phước Hải; Hồ Quí Đầy; Phan Đức Anh; Giấy | 5h |  | 150 |  |
| 6 | 1.1.4 | Meeting Report 4 | manual | 1h | 2016-03-08 08:00 A | 2016-03-08 09:00 |  |  | 1h |  |  |  |  |  | start no earlier than 2016-03-08 08:00 | Hồ Quí Đầy; Nguyễn Trần Tiến Đạt; Nguyễn Văn Bông; Phan Đức Anh; Trần Liêu Phước Hải; Giấy | 5h |  | 185 |  |
| 7 | 1.1.5 | Meeting Report 5 | manual | 1h | 2016-03-15 08:00 A | 2016-03-15 09:00 |  |  | 1h |  |  |  |  |  | start no earlier than 2016-03-15 08:00 | Nguyễn Văn Bông; Phan Đức Anh; Trần Liêu Phước Hải; Giấy | 3h |  | 90 |  |
| 8 | 1.1.6 | Meeting Report 6 | manual | 1h | 2016-03-22 08:00 A | 2016-03-22 09:00 |  |  | 1h |  |  |  |  |  | start no earlier than 2016-03-22 08:00 | Hồ Quí Đầy; Nguyễn Trần Tiến Đạt; Trần Liêu Phước Hải; Giấy | 3h |  | 105 |  |
| 9 | 1.1.7 | Meeting Report 7 | manual | 1h | 2016-03-29 08:00 A | 2016-03-29 09:00 |  |  | 1h |  |  |  |  |  | start no earlier than 2016-03-29 08:00 | Hồ Quí Đầy; Nguyễn Trần Tiến Đạt; Nguyễn Văn Bông; Phan Đức Anh; Trần Liêu Phước Hải; Giấy | 5h |  | 150 |  |
| 10 | 1.1.8 | Meeting Report 8 | manual | 1h | 2016-04-05 08:00 A | 2016-04-05 09:00 |  |  | 1h |  |  |  |  |  | start no earlier than 2016-04-05 08:00 | Nguyễn Trần Tiến Đạt; Phan Đức Anh; Trần Liêu Phước Hải; Giấy | 3h |  | 95 |  |
| 11 | 1.1.9 | Meeting Report 9 | manual | 1h | 2016-04-12 08:00 A | 2016-04-12 09:00 |  |  | 1h |  |  |  |  |  | start no earlier than 2016-04-12 08:00 | Hồ Quí Đầy; Nguyễn Trần Tiến Đạt; Nguyễn Văn Bông; Phan Đức Anh; Trần Liêu Phước Hải; Giấy | 5h |  | 150 |  |
| 12 | 1.1.10 | Meeting Report 10 | manual | 1h | 2016-04-19 08:00 A | 2016-04-19 09:00 |  |  | 1h |  |  |  |  |  | start no earlier than 2016-04-19 08:00 | Nguyễn Văn Bông; Phan Đức Anh; Trần Liêu Phước Hải; Giấy | 3h |  | 150 |  |
| 13 | 1.1.11 | Meeting Report 11 | manual | 1h | 2016-04-26 08:00 A | 2016-04-26 09:00 |  |  | 1h |  |  |  |  |  | start no earlier than 2016-04-26 08:00 | Hồ Quí Đầy; Nguyễn Trần Tiến Đạt; Nguyễn Văn Bông; Phan Đức Anh; Trần Liêu Phước Hải; Giấy | 5h |  | 170 |  |
| 14 | 1.1.12 | Meeting Report 12 | manual | 1h | 2016-05-03 08:00 A | 2016-05-03 09:00 |  |  | 1h |  |  |  |  |  | start no earlier than 2016-05-03 08:00 | Hồ Quí Đầy; Nguyễn Trần Tiến Đạt; Nguyễn Văn Bông; Phan Đức Anh; Trần Liêu Phước Hải; Giấy | 5h |  | 150 |  |
| 15 | 1.1.13 | Meeting Report 13 | manual | 1h | 2016-05-10 08:00 A | 2016-05-10 09:00 |  |  | 1h |  |  |  |  |  | start no earlier than 2016-05-10 08:00 | Nguyễn Văn Bông; Phan Đức Anh; Trần Liêu Phước Hải; Giấy | 3h |  | 90 |  |
| 16 | 1.2 | **CÔNG TÁC CHUẨN BỊ** |  | 14d | 2016-02-15 08:00 A | 2016-03-03 17:00 |  | 100% |  |  | 2016-03-03 12:00 |  |  |  |  |  | 447h | 447h | 16,130 | 16,130 |
| 17 | 1.2.1 | **Tìm hiểu kiến thức tổng quát.** |  | 5d | 2016-02-15 08:00 A | 2016-02-19 17:00 A |  | 100% |  |  |  |  |  |  |  |  | 180h | 180h | 5,400 | 5,400 |
| 18 | 1.2.1.1 | - Tìm hiểu kit STM32F4, ATMega3280 |  | 1d | 2016-02-15 08:00 A | 2016-02-15 17:00 A |  | 100% |  |  |  |  |  |  |  | Hồ Quí Đầy; Nguyễn Trần Tiến Đạt | 16h | 16h | 480 | 480 |
| 19 | 1.2.1.2 | - Tìm hiểu về các loại cảm biến thời tiết sử dụng |  | 1d | 2016-02-15 08:00 A | 2016-02-15 17:00 A |  | 100% |  |  |  |  |  |  | start no earlier than 2016-02-15 08:00 | Nguyễn Văn Bông; Phan Đức Anh; Trần Liêu Phước Hải | 24h | 24h | 720 | 720 |
| 20 | 1.2.1.3 | - Tìm hiểu giao tiếp các loại thiết bị xuất , lưu trữ : màn hình LCD, thẻ nhớ |  | 1.5d | 2016-02-16 13:00 A | 2016-02-17 17:00 A | 3, 19 | 100% |  |  |  |  |  |  | finish no earlier than 2016-02-17 17:00 | Hồ Quí Đầy; Nguyễn Trần Tiến Đạt; Nguyễn Văn Bông; Phan Đức Anh; Trần Liêu Phước Hải | 60h | 60h | 1,800 | 1,800 |
| 21 | 1.2.1.4 | - Xây dựng mộ hình tổng quan của hệ thống |  | 2d | 2016-02-18 08:00 A | 2016-02-19 17:00 A | 20 | 100% |  |  |  |  |  |  | start no earlier than 2016-02-18 08:00 | Hồ Quí Đầy; Nguyễn Trần Tiến Đạt; Nguyễn Văn Bông; Phan Đức Anh; Trần Liêu Phước Hải | 80h | 80h | 2,400 | 2,400 |
| 22 | 1.2.2 | **Triển khai giải thuật.** |  | 9d | 2016-02-20 08:00 | 2016-03-02 17:00 |  | 100% |  | 2016-02-22 08:00 | 2016-03-02 14:00 |  |  |  |  |  | 231h | 231h | 6,930 | 6,930 |
| 23 | 1.2.2.1 | - Đọc dữ liệu từ các cảm biến. |  | 1.5d | 2016-03-01 09:00 A | 2016-03-02 14:00 A | 5 | 100% |  |  |  |  |  |  | start no earlier than 2016-03-01 08:00 | Nguyễn Trần Tiến Đạt; Nguyễn Văn Bông | 24h | 24h | 720 | 720 |
| 24 | 1.2.2.2 | - Đọc dữ liệu từ các đồng hồ thời gian thực |  | 1d | 2016-02-22 08:00 A | 2016-02-22 17:00 A |  | 100% |  |  |  |  |  |  |  | Phan Đức Anh; Trần Liêu Phước Hải | 16h | 16h | 480 | 480 |
| 25 | 1.2.2.3 | - Giao tiếp lưu trữ dữ liệu với thẻ nhớ |  | 1d | 2016-02-22 08:00 A | 2016-02-22 17:00 A |  | 100% |  |  |  |  |  |  | finish no earlier than 2016-02-22 17:00 | Nguyễn Trần Tiến Đạt; Nguyễn Văn Bông | 16h | 16h | 480 | 480 |
| 26 | 1.2.2.4 | - Triển khai giải thuật máy học. |  | 4.5d | 2016-02-23 09:00 A | 2016-02-29 14:00 A | 4, 25 | 100% |  |  |  |  |  |  | start no earlier than 2016-02-23 08:00 | Hồ Quí Đầy; Nguyễn Trần Tiến Đạt; Nguyễn Văn Bông; Phan Đức Anh; Trần Liêu Phước Hải | 175h | 175h | 5,250 | 5,250 |

| ID | WBS | Task | Duration | Start | Finish | Predecessors | Complete | Remaining | Actual start | Actual finish | Baseline start | Baseline finish | Baseline duration | Total slack | Constraint | Resources | Work | Actual work | Cost | Actual cost |
| --- | --- | --- | --- | --- | --- | --- | --- | --- | --- | --- | --- | --- | --- | --- | --- | --- | --- | --- | --- | --- |
| 27 | 1.2.3 | **Tìm mua thiết bị** | 1d | 2016-03-03 08:00 A | 2016-03-03 17:00 |  | 100% |  |  | 2016-03-03 12:00 |  |  |  |  |  |  | 36h | 36h | 3,800 | 3,800 |
| 28 | 1.2.3.1 | - Vi điều khiển trung tâm Arduino Nano | 0.5d | 2016-03-03 08:00 A | 2016-03-03 12:00 A |  | 100% |  |  |  |  |  |  |  |  | Nguyễn Văn Bông; Phan Đức Anh | 8h | 8h | 800 | 800 |
| 29 | 1.2.3.2 | - Cảm biến áp suất BMP085. | 0.5d | 2016-03-03 08:00 A | 2016-03-03 12:00 A |  | 100% |  |  |  |  |  |  |  |  | Nguyễn Văn Bông; Phan Đức Anh | 8h | 8h | 1,000 | 1,000 |
| 30 | 1.2.3.3 | - Cảm biến nhiệt độ độ ẩm DHT11. | 0.5d | 2016-03-03 08:00 A | 2016-03-03 12:00 A |  | 100% |  |  |  |  |  |  |  |  | Hồ Quí Đầy; Nguyễn Trần Tiến Đạt | 8h | 8h | 500 | 500 |
| 31 | 1.2.3.4 | - Màn hình hiển thị LCD Nokia | 0.5d | 2016-03-03 08:00 A | 2016-03-03 12:00 A |  | 100% |  |  |  |  |  |  |  |  | Hồ Quí Đầy; Nguyễn Trần Tiến Đạt | 8h | 8h | 500 | 500 |
| 32 | 1.2.3.5 | - Mạch đọc thẻ nhớ | 0.5d | 2016-03-03 08:00 A | 2016-03-03 12:00 A |  | 100% |  |  |  |  |  |  |  |  | Trần Liêu Phước Hải | 4h | 4h | 1,000 | 1,000 |
| 33 | 1.3 | **THIẾT KẾ SẢN PHẨM.** | 38d | 2016-03-04 08:00 A | 2016-04-25 17:00 |  | 99% | 0d |  |  |  |  |  |  |  |  | 716h | 716h | 25,020 | 24,015.8 |
| 34 | 1.3.1 | **Lập trình cho hệ thống .** | 21d | 2016-03-04 08:00 A | 2016-04-01 17:00 |  | 99% | 0d |  |  |  |  |  |  |  |  | 444h | 444h | 13,920 | 13,419 |
| 35 | 1.3.1.1 | - Láp ráp , Liên kết các thiết bị . | 3.5d | 2016-03-29 09:00 A | 2016-04-01 14:00 | 9, 32, 31, 28, 29, 30 | 99% | 0d |  |  |  |  |  | 31.38d | start no earlier than 2016-03-29 08:00 | Nguyễn Trần Tiến Đạt; Trần Liêu Phước Hải; Nguyễn Văn Bông; Chi phí sửa mạch | 84h | 84h | 3,120 | 2,619 |
| 36 | 1.3.1.2 | - Lập trình lấy dữ liệu từ các cảm biến. | 7d | 2016-03-08 09:00 A | 2016-03-17 09:00 A | 6 | 100% |  |  |  |  |  |  |  | start no earlier than 2016-03-08 08:00 | Hồ Quí Đầy; Nguyễn Trần Tiến Đạt | 112h | 112h | 3,360 | 3,360 |
| 37 | 1.3.1.3 | - Lập trình giao tiếp đồng hồ thời gian thực. | 2d | 2016-03-04 08:00 A | 2016-03-07 17:00 A |  | 100% |  |  |  | 2016-03-04 08:00 | 2016-03-07 17:00 | 2d |  |  | Phan Đức Anh; Trần Liêu Phước Hải | 32h | 32h | 960 | 960 |
| 38 | 1.3.1.4 | - Lập trình hiển thị dữ liệu ra màn hình. | 3d | 2016-03-09 08:00 A | 2016-03-11 17:00 A |  | 100% |  |  |  | 2016-03-09 08:00 | 2016-03-11 17:00 | 3d |  | start no earlier than 2016-03-09 08:00 | Trần Liêu Phước Hải; Nguyễn Văn Bông; Phan Đức Anh | 72h | 72h | 2,160 | 2,160 |
| 39 | 1.3.1.5 | - Lập trình đọc ghi dữ liệu môi trường đến thẻ nhớ. | 2d | 2016-03-18 08:00 A | 2016-03-21 17:00 A |  | 100% |  |  |  | 2016-03-18 08:00 | 2016-03-21 17:00 | 2d |  | start no earlier than 2016-03-18 08:00 | Hồ Quí Đầy; Nguyễn Trần Tiến Đạt | 32h | 32h | 960 | 960 |
| 40 | 1.3.1.6 | - Lập trình máy học từ dữ liệu môi trường thu thập được. | 7d | 2016-03-18 08:00 A | 2016-03-28 17:00 A |  | 100% |  |  |  |  |  |  |  | start no earlier than 2016-03-18 08:00 | Nguyễn Văn Bông; Phan Đức Anh | 112h | 112h | 3,360 | 3,360 |
| 41 | 1.3.2 | **Thiết kế board mạch và nguồn cho hệ thống.** | 14d | 2016-04-02 08:00 | 2016-04-20 17:00 |  | 99% | 0d | 2016-04-04 08:00 |  |  |  |  |  |  |  | 272h | 272h | 11,100 | 10,596.8 |
| 42 | 1.3.2.1 | - Vẽ Layout mô hình board mạch và thiết bị bằng phần mềm. | 3d | 2016-04-04 08:00 A | 2016-04-06 17:00 A |  | 100% |  |  |  | 2016-04-04 08:00 | 2016-04-06 17:00 | 3d |  | start no earlier than 2016-04-04 08:00 | Hồ Quí Đầy; Nguyễn Văn Bông | 48h | 48h | 2,000 | 2,000 |
| 43 | 1.3.2.2 | - In bản thiết kế và ủi đế mạch(board) | 3d | 2016-04-07 08:00 A | 2016-04-11 17:00 A | 40, 11 | 100% |  |  |  |  |  |  |  | start no earlier than 2016-04-07 08:00 | Nguyễn Trần Tiến Đạt; Phan Đức Anh; Trần Liêu Phước Hải | 72h | 72h | 2,600 | 2,600 |
| 44 | 1.3.2.3 | - Hàn các thiết bị lên đế mạch(board) | 3.5d | 2016-04-12 09:00 A | 2016-04-15 14:00 | 11 | 99% | 0d |  |  |  |  |  | 20.38d | start no earlier than 2016-04-12 08:00 | Hồ Quí Đầy; Nguyễn Trần Tiến Đạt; Chi phí sửa mạch | 56h | 56h | 2,500 | 1,996.8 |
| 45 | 1.3.2.4 | - Chọn nguồn cấp cho thiết bị và hàn lên đế mạch. | 3d | 2016-04-14 08:00 A | 2016-04-18 17:00 A | 11, 12SF | 100% |  |  |  | 2016-04-14 08:00 | 2016-04-18 17:00 | 3d |  | start no earlier than 2016-04-14 08:00 | Nguyễn Văn Bông; Phan Đức Anh; Trần Liêu Phước Hải | 72h | 72h | 2,500 | 2,500 |
| 46 | 1.3.2.5 | - Đóng hộp sản phẩm. | 1.5d | 2016-04-19 09:00 A | 2016-04-20 14:00 A | 12, 13SF | 100% |  |  |  |  |  |  |  | start no earlier than 2016-04-19 08:00 | Nguyễn Văn Bông; Phan Đức Anh | 24h | 24h | 1,500 | 1,500 |
| 47 | 1.4 | **THU HOẠCH DỰ ÁN.** | 10d | 2016-04-21 08:00 A | 2016-05-04 17:00 |  | 82% | 1.76d |  |  |  |  |  |  |  |  | 208h | 140h | 7,340 | 5,300 |
| 48 | 1.4.1 | **Kiểm tra sản phẩm.** | 7d | 2016-04-21 08:00 A | 2016-04-29 17:00 |  | 100% |  |  | 2016-04-29 14:00 |  |  |  |  |  |  | 140h | 140h | 5,300 | 5,300 |
| 49 | 1.4.1.1 | - Đưa sản phẩm ra môi trường thực tế để kiểm thử hệ thống. | 3.5d | 2016-04-21 08:00 A | 2016-04-26 12:00 A | 13SF, 14SF | 100% |  |  |  |  |  |  |  |  | Hồ Quí Đầy; Nguyễn Văn Bông | 56h | 56h | 2,500 | 2,500 |
| 50 | 1.4.1.2 | - Dự trù phát hiện, chỉnh sửa hệ thống. | 3.5d | 2016-04-26 09:00 A | 2016-04-29 14:00 A | 13 | 100% |  |  |  |  |  |  |  | start no earlier than 2016-04-26 08:00 | Nguyễn Trần Tiến Đạt; Phan Đức Anh; Trần Liêu Phước Hải | 84h | 84h | 2,800 | 2,800 |

| ID | WBS | Task | Duration | Start | Finish | Predecessors | Remaining | Total slack | Free slack | Constraint | Resources | Work | Cost |
| --- | --- | --- | --- | --- | --- | --- | --- | --- | --- | --- | --- | --- | --- |
| 51 | 1.4.2 | **Thu nhận ý kiến , đánh giá của người sử dụng.** | 4d | 2016-04-30 08:00 | 2016-05-04 17:00 |  |  |  |  |  |  | 68h | 2,040 |
| 52 | 1.4.2.1 | - Thu nhận ý kiến | 1d | 2016-05-04 08:00 | 2016-05-04 17:00 | 14SF, 15 |  | 0d |  | start no earlier than 2016-05-04 08:00 | Nguyễn Trần Tiến Đạt; Nguyễn Văn Bông; Trần Liêu Phước Hải; Phan Đức Anh; Hồ Quí Đầy; Nguyễn Minh Chánh | 48h | 1,440 |
| 53 | 1.4.2.2 | - Đánh giá ý kiến người dùng | 0.5d | 2016-05-05 08:00 | 2016-05-05 12:00 | 52 |  | 0d |  | start no earlier than 2016-05-04 08:00 | Phan Đức Anh; Hồ Quí Đầy; Nguyễn Trần Tiến Đạt; Nguyễn Văn Bông; Trần Liêu Phước Hải | 20h | 600 |
| 54 | 1.5 | **BÁO CÁO** | 8d | 2016-05-05 08:00 A | 2016-05-15 17:00 |  | 8d |  |  |  |  | 176h | 5,377.5 |
| 55 | 1.5.1 | Viết báo cáo chi tiết sản phẩm | 2.5d | 2016-05-10 10:11 | 2016-05-12 15:11 | 56 |  | 1.23d |  |  | Giấy [300%]; Hồ Quí Đầy; Nguyễn Trần Tiến Đạt; Nguyễn Văn Bông; Phan Đức Anh; Trần Liêu Phước Hải; Nguyễn Minh Chánh | 120h | 3,645 |
| 56 | 1.5.2 | Viết tài liệu hướng dẫn người sử dụng. | 2.77d | 2016-05-05 08:00 A | 2016-05-10 10:11 | 15SF, 53 | 2.77d | 1.23d | 0d |  | Giấy [350%]; Hồ Quí Đầy; Nguyễn Trần Tiến Đạt; Nguyễn Minh Chánh | 56h | 1,732.5 |
