# WBS_Mau_2020

Schedule from MS Project, 2020-02-17 to 2020-08-04, costs in $.

## Calendars

- MyCalendar: Mon-Fri 08:00-12:00, 13:00-17:00; Sat-Sun off.

## Resources

| Resource | Unit | Rate |
| --- | --- | --- |
| LXNhat |  | 30 |
| TDHoang |  | 20 |
| NHAnh |  | 20 |
| Ms Project Pro 2k3 | Giờ/Lisence | 0.5 |
| Camtasia | Giờ/Lisence | 0.8 |
| Giấy | Trang | 0.1 |

## Schedule

| ID | WBS | Task | Type | Duration | Start | Finish | Predecessors | Baseline start | Baseline finish | Baseline duration | Total slack | Free slack | Constraint | Resources | Work | Cost | Baseline cost |
| --- | --- | --- | --- | --- | --- | --- | --- | --- | --- | --- | --- | --- | --- | --- | --- | --- | --- |
| 1 | 1 | **Xây dựng tài liệu hướng dẫn sử dụng MS Project 2003** |  | 122d | 2020-02-17 08:00 | 2020-08-04 17:00 |  | 2020-02-17 08:00 | 2020-08-04 17:00 | 122d |  |  |  |  | 370h | 8,938.4 | 8,938.4 |
| 2 | 1.1 | Quản lý dự án | milestone | 0d | 2020-02-17 08:00 | 2020-02-17 08:00 |  | 2020-02-17 08:00 | 2020-02-17 08:00 | 0d | 122d |  |  | LXNhat |  |  |  |
| 3 | 1.2 | **Họp định kỳ hàng tuần** |  | 100.12d | 2020-02-21 13:00 | 2020-07-10 14:00 |  | 2020-02-21 13:00 | 2020-07-10 14:00 | 100.12d | 17.25d |  |  |  | 18h | 420 | 420 |
| 4 | 1.2.1 | Họp định kỳ hàng tuần 1 |  | 1h | 2020-02-21 13:00 | 2020-02-21 14:00 |  | 2020-02-21 13:00 | 2020-02-21 14:00 | 1h | 116.38d |  | start no earlier than 2020-02-21 08:00 | LXNhat; NHAnh; TDHoang | 3h | 70 | 70 |
| 5 | 1.2.2 | Họp định kỳ hàng tuần 2 |  | 1h | 2020-03-20 13:00 | 2020-03-20 14:00 |  | 2020-03-20 13:00 | 2020-03-20 14:00 | 1h | 96.38d |  | start no earlier than 2020-03-20 08:00 | LXNhat; NHAnh; TDHoang | 3h | 70 | 70 |
| 6 | 1.2.3 | Họp định kỳ hàng tuần 3 |  | 1h | 2020-04-17 13:00 | 2020-04-17 14:00 |  | 2020-04-17 13:00 | 2020-04-17 14:00 | 1h | 76.38d |  | start no earlier than 2020-04-17 08:00 | LXNhat; NHAnh; TDHoang | 3h | 70 | 70 |
| 7 | 1.2.4 | Họp định kỳ hàng tuần 4 |  | 1h | 2020-05-15 13:00 | 2020-05-15 14:00 |  | 2020-05-15 13:00 | 2020-05-15 14:00 | 1h | 56.38d |  | start no earlier than 2020-05-15 08:00 | LXNhat; NHAnh; TDHoang | 3h | 70 | 70 |
| 8 | 1.2.5 | Họp định kỳ hàng tuần 5 |  | 1h | 2020-06-12 13:00 | 2020-06-12 14:00 |  | 2020-06-12 13:00 | 2020-06-12 14:00 | 1h | 36.38d |  | start no earlier than 2020-06-12 08:00 | LXNhat; NHAnh; TDHoang | 3h | 70 | 70 |
| 9 | 1.2.6 | Họp định kỳ hàng tuần 6 |  | 1h | 2020-07-10 13:00 | 2020-07-10 14:00 |  | 2020-07-10 13:00 | 2020-07-10 14:00 | 1h | 16.38d |  | start no earlier than 2020-07-10 08:00 | LXNhat; NHAnh; TDHoang | 3h | 70 | 70 |
| 10 | 1.3 | **Tài liệu hướng dẫn (sách + phim)** |  | 76.88d | 2020-02-17 08:00 | 2020-06-02 16:00 |  | 2020-02-17 08:00 | 2020-06-02 16:00 | 76.88d | 9.88d |  |  |  | 264h | 6,234.8 | 6,234.8 |
| 11 | 1.3.1 | **Thiết kế** |  | 20.75d | 2020-02-17 08:00 | 2020-03-16 15:00 |  | 2020-02-17 08:00 | 2020-03-16 15:00 | 20.75d | 11.62d |  |  | Giấy [1000 Trang] | 64h | 1,700 | 1,700 |
| 12 | 1.3.1.1 | Lên nội dung hướng dẫn |  | 2d | 2020-02-17 08:00 | 2020-02-28 16:00 |  | 2020-02-17 08:00 | 2020-02-28 16:00 | 2d | 10.38d | 0.12d |  | LXNhat | 16h | 480 | 480 |
| 13 | 1.3.1.2 | Biên soạn dàn ý |  | 2d | 2020-03-02 07:00 | 2020-03-13 14:00 | 12 | 2020-03-02 07:00 | 2020-03-13 14:00 | 2d | 15.62d | 0d |  | LXNhat | 16h | 480 | 480 |
| 14 | 1.3.1.3 | Biên soạn kịch bản |  | 3d | 2020-03-02 13:00 | 2020-03-16 15:00 | 12 | 2020-03-02 13:00 | 2020-03-16 15:00 | 3d | 10.25d | 0d |  | TDHoang | 24h | 480 | 480 |
| 15 | 1.3.1.4 | Thiết kế bìa |  | 1d | 2020-02-17 08:00 | 2020-02-24 08:00 |  | 2020-02-17 08:00 | 2020-02-24 08:00 | 1d | 71.25d | 55d |  | NHAnh | 8h | 160 | 160 |
| 16 | 1.3.2 | **Tổ chức thực hiện** |  | 46.12d | 2020-03-13 14:00 | 2020-05-18 15:00 |  | 2020-03-13 14:00 | 2020-05-18 15:00 | 46.12d | 10.5d |  |  |  | 168h | 3,574.8 | 3,574.8 |
| 17 | 1.3.2.1 | Soạn sách theo dàn ý |  | 9d | 2020-03-13 14:00 | 2020-05-08 16:00 | 13 | 2020-03-13 14:00 | 2020-05-08 16:00 | 9d | 16.38d | 0.12d | start no earlier than 2019-03-15 08:00 | NHAnh; Giấy [500 Trang]; Ms Project Pro 2k3 [80 Giờ/Lisence] | 72h | 1,530 | 1,530 |
| 18 | 1.3.2.2 | Quay phim theo kịch bản |  | 12d | 2020-03-16 15:00 | 2020-05-18 15:00 | 14 | 2020-03-16 15:00 | 2020-05-18 15:00 | 12d | 10.25d | 0.75d |  | TDHoang; Ms Project Pro 2k3 [96 Giờ/Lisence]; Camtasia [96 Giờ/Lisence] | 96h | 2,044.8 | 2,044.8 |
| 19 | 1.3.3 | **Kiểm tra** |  | 16.88d | 2020-05-11 07:00 | 2020-06-02 16:00 |  | 2020-05-11 07:00 | 2020-06-02 16:00 | 16.88d | 9.88d |  |  |  | 32h | 960 | 960 |
| 20 | 1.3.3.1 | Kiểm tra sách |  | 2d | 2020-05-11 07:00 | 2020-05-22 15:00 | 17, 15 | 2020-05-11 07:00 | 2020-05-22 15:00 | 2d | 17d | 9.75d |  | LXNhat | 16h | 480 | 480 |
| 21 | 1.3.3.2 | Kiểm tra phim |  | 2d | 2020-05-22 15:00 | 2020-06-02 16:00 | 18 | 2020-05-22 15:00 | 2020-06-02 16:00 | 2d | 9.88d | 2.62d | start no earlier than 2019-05-18 08:00 | LXNhat | 16h | 480 | 480 |
| 22 | 1.4 | **Triển khai thử nghiệm** |  | 35.12d | 2020-06-05 13:00 | 2020-07-24 14:00 |  | 2020-06-05 13:00 | 2020-07-24 14:00 | 35.12d | 6.62d |  |  |  | 88h | 2,283.6 | 2,283.6 |
| 23 | 1.4.1 | Triển khai thử nghiệm |  | 4d | 2020-06-05 13:00 | 2020-07-03 14:00 | 20, 21 | 2020-06-05 13:00 | 2020-07-03 14:00 | 4d | 7.25d | 0d |  | LXNhat; Giấy [1500 Trang] | 32h | 1,110 | 1,110 |
| 24 | 1.4.2 | **Chỉnh sửa theo feedback** |  | 15d | 2020-07-03 14:00 | 2020-07-24 14:00 |  | 2020-07-03 14:00 | 2020-07-24 14:00 | 15d | 6.62d |  |  |  | 56h | 1,173.6 | 1,173.6 |
| 25 | 1.4.2.1 | Chỉnh sửa sách |  | 3d | 2020-07-03 14:00 | 2020-07-21 09:00 | 23 | 2020-07-03 14:00 | 2020-07-21 09:00 | 3d | 10.12d |  |  | NHAnh; Ms Project Pro 2k3 [24 Giờ/Lisence] | 24h | 492 | 492 |
| 26 | 1.4.2.2 | Chỉnh sửa phim |  | 4d | 2020-07-03 14:00 | 2020-07-24 14:00 | 23 | 2020-07-03 14:00 | 2020-07-24 14:00 | 4d | 6.38d |  |  | TDHoang; Ms Project Pro 2k3 [32 Giờ/Lisence]; Camtasia [32 Giờ/Lisence] | 32h | 681.6 | 681.6 |
