# Dự án xây dựng Website cho Cty TNHH MTV Công Trình Giao Thông Công Chánh

Schedule from MS Project, 2011-06-20 to 2011-08-12, status date 2011-06-20, costs in $, A marks actual dates.
Ke hoach xay dung Website cho Cty CTGTCC

## Calendars

- Standard: Mon-Fri 08:00-12:00, 13:00-17:00; Sat-Sun off. Exceptions (off unless hours are given): 2011-06-21 08:00-12:00, 13:00-17:00.

## Resources

| Resource | Rate | Cost per use |
| --- | --- | --- |
| N.T.Hiệp | 2 |  |
| N.T.Khánh | 2 |  |
| N.T.Nhân | 1.5 |  |
| N.Q.Duy | 1.5 |  |
| Giấy | 0.01 |  |
| Host |  | 150 |
| Bản dịch tiếng anh |  | 30 |
| Tên miền |  | 10 |

## Schedule

| ID | WBS | Task | Duration | Start | Finish | Predecessors | Complete | Remaining | Baseline start | Baseline finish | Baseline duration | Total slack | Free slack | Constraint | Resources | Work | Actual work | Cost | Baseline cost | Actual cost |
| --- | --- | --- | --- | --- | --- | --- | --- | --- | --- | --- | --- | --- | --- | --- | --- | --- | --- | --- | --- | --- |
| 1 | 1 | **Dự án xây dựng Website cho Cty TNHH MTV Công Trình Giao Thông Công Chánh** | 39.75d | 2011-06-20 08:00 A | 2011-08-12 15:00 |  | 6% | 37.18d | 2011-06-20 08:00 | 2011-08-11 11:00 | 38.38d | 0d |  |  |  | 581h | 29h | 1,201.2 | 1,201.2 | 53.35 |
| 2 | 1.1 | **Họp định kì hàng tuần** | 14.12d | 2011-06-24 08:00 | 2011-07-14 09:00 |  |  |  | 2011-06-23 08:00 | 2011-07-14 09:00 | 15.12d | 21.62d |  |  | Giấy [30000%] | 16h |  | 31 | 31 |  |
| 3 | 1.1.1 | Họp định kì hàng tuần 1 | 1h | 2011-06-24 08:00 | 2011-06-24 09:00 |  |  |  | 2011-06-23 08:00 | 2011-06-23 09:00 | 1h | 35.62d |  | start no earlier than 2011-06-23 17:00 | N.T.Hiệp; N.T.Khánh; N.T.Nhân; N.Q.Duy | 4h |  | 7 | 7 |  |
| 4 | 1.1.2 | Họp định kì hàng tuần 2 | 1h | 2011-06-30 08:00 | 2011-06-30 09:00 |  |  |  | 2011-06-30 08:00 | 2011-06-30 09:00 | 1h | 31.62d |  | start no earlier than 2011-06-30 08:00 | N.T.Hiệp; N.T.Khánh; N.T.Nhân; N.Q.Duy | 4h |  | 7 | 7 |  |
| 5 | 1.1.3 | Họp định kì hàng tuần 3 | 1h | 2011-07-07 08:00 | 2011-07-07 09:00 |  |  |  | 2011-07-07 08:00 | 2011-07-07 09:00 | 1h | 26.62d |  | start no earlier than 2011-07-07 08:00 | N.T.Hiệp; N.T.Khánh; N.T.Nhân; N.Q.Duy | 4h |  | 7 | 7 |  |
| 6 | 1.1.4 | Họp định kì hàng tuần 4 | 1h | 2011-07-14 08:00 | 2011-07-14 09:00 |  |  |  | 2011-07-14 08:00 | 2011-07-14 09:00 | 1h | 21.62d |  | start no earlier than 2011-07-14 08:00 | N.T.Hiệp; N.T.Khánh; N.T.Nhân; N.Q.Duy | 4h |  | 7 | 7 |  |
| 7 | 1.2 | **Xác định** | 4.5d | 2011-06-20 08:00 A | 2011-06-24 12:00 |  | 71% | 1.3d | 2011-06-20 08:00 | 2011-06-22 17:00 | 3d | 0d |  |  | Giấy [16000%] | 42h | 29h | 79.6 | 79.6 | 53.35 |
| 8 | 1.2.1 | Viết đề cương dự án | 8h | 2011-06-20 08:00 | 2011-06-20 17:00 |  |  |  | 2011-06-20 08:00 | 2011-06-20 17:00 | 8h | 3.5d |  | finish no later than 2011-06-24 17:00 | N.T.Hiệp | 8h |  | 16 | 16 |  |
| 9 | 1.2.2 | **Xác định yêu cầu khách hàng** | 1d | 2011-06-20 08:00 A | 2011-06-20 17:00 A |  | 100% |  | 2011-06-20 08:00 | 2011-06-20 17:00 | 1d |  |  |  |  | 8h | 8h | 12 | 12 | 12 |
| 10 | 1.2.2.1 | Phỏng vấn khách hàng | 4h | 2011-06-20 08:00 A | 2011-06-20 12:00 A |  | 100% |  | 2011-06-20 08:00 | 2011-06-20 12:00 | 4h |  |  |  | N.T.Nhân | 4h | 4h | 6 | 6 | 6 |
| 11 | 1.2.2.2 | Soạn tài liệu yêu cầu khách hàng | 4h | 2011-06-20 13:00 A | 2011-06-20 17:00 A | 10 | 100% |  | 2011-06-20 13:00 | 2011-06-20 17:00 | 4h |  |  |  | N.T.Nhân | 4h | 4h | 6 | 6 | 6 |
| 12 | 1.2.3 | Viết tài liệu nghiên cứu khả thi | 2h | 2011-06-21 08:00 A | 2011-06-21 10:00 A | 11 | 100% |  | 2011-06-21 08:00 | 2011-06-21 10:00 | 2h |  |  |  | N.T.Hiệp | 2h | 2h | 4 | 4 | 4 |
| 13 | 1.2.4 | **Xác định rủi ro** | 1d | 2011-06-21 08:00 A | 2011-06-21 17:00 A | 9 | 100% |  | 2011-06-21 08:00 | 2011-06-21 17:00 | 1d |  |  |  |  | 8h | 8h | 14 | 14 | 14 |
| 14 | 1.2.4.1 | Giả định rủi ro | 4h | 2011-06-21 08:00 A | 2011-06-21 12:00 A |  | 100% |  | 2011-06-21 08:00 | 2011-06-21 12:00 | 4h |  |  |  | N.Q.Duy | 4h | 4h | 6 | 6 | 6 |
| 15 | 1.2.4.2 | Giải pháp xử lý rủi ro | 4h | 2011-06-21 13:00 A | 2011-06-21 17:00 A | 14 | 100% |  | 2011-06-21 13:00 | 2011-06-21 17:00 | 4h |  |  |  | N.T.Hiệp | 4h | 4h | 8 | 8 | 8 |
| 16 | 1.2.5 | **Lập kế hoạch ban đầu** | 2.5d | 2011-06-22 08:00 A | 2011-06-24 12:00 | 13 | 75% | 0.62d | 2011-06-22 08:00 | 2011-06-22 17:00 | 1d | 0d |  |  |  | 16h | 11h | 32 | 32 | 22 |
| 17 | 1.2.5.1 | Lập kế hoạch nhân sự | 4h | 2011-06-22 08:00 A | 2011-06-22 12:00 A |  | 100% |  | 2011-06-22 08:00 | 2011-06-22 12:00 | 4h |  |  |  | N.T.Hiệp | 4h | 4h | 8 | 8 | 8 |
| 18 | 1.2.5.2 | Lập kế hoạch tài nguyên | 4h | 2011-06-22 08:00 A | 2011-06-24 10:00 |  | 75% | 1h | 2011-06-22 08:00 | 2011-06-22 12:00 | 4h | 0d |  |  | N.T.Khánh | 4h | 3h | 8 | 8 | 6 |
| 19 | 1.2.5.3 | Ước lượng thời gian và chi phí dự án | 4h | 2011-06-22 13:00 A | 2011-06-24 12:00 | 18 | 50% | 2h | 2011-06-22 13:00 | 2011-06-22 17:00 | 4h | 0d |  |  | N.T.Hiệp; N.T.Khánh | 8h | 4h | 16 | 16 | 8 |
| 20 | 1.3 | **Phân tích** | 1.88d | 2011-06-24 13:00 | 2011-06-28 11:00 | 7 |  |  | 2011-06-23 09:00 | 2011-06-24 17:00 | 1.88d | 0d |  |  | Giấy [10000%] | 27h |  | 53.5 | 53.5 |  |
| 21 | 1.3.1 | **Phân tích yêu cầu người dùng** | 1.12d | 2011-06-24 13:00 | 2011-06-27 14:00 |  |  |  | 2011-06-23 09:00 | 2011-06-24 10:00 | 1.12d | 0.75d |  |  |  | 9h |  | 18 | 18 |  |
| 22 | 1.3.1.1 | Phân tích yêu cầu phi chức năng | 2h | 2011-06-24 13:00 | 2011-06-24 15:00 |  |  |  | 2011-06-23 09:00 | 2011-06-23 11:00 | 2h | 0.75d | 0d | start no earlier than 2011-06-23 17:00 | N.T.Hiệp | 2h |  | 4 | 4 |  |
| 23 | 1.3.1.2 | Phân tích yêu cầu chức năng | 3h | 2011-06-24 15:00 | 2011-06-27 09:00 | 22 |  |  | 2011-06-23 11:00 | 2011-06-23 15:00 | 3h | 0.75d | 0d | start no earlier than 2011-06-23 17:00 | N.T.Hiệp | 3h |  | 6 | 6 |  |
| 24 | 1.3.1.3 | Viết báo cáo phân tích | 4h | 2011-06-27 09:00 | 2011-06-27 14:00 | 23 |  |  | 2011-06-23 15:00 | 2011-06-24 10:00 | 4h | 0.75d |  | start no earlier than 2011-06-23 17:00 | N.T.Hiệp | 4h |  | 8 | 8 |  |
| 25 | 1.3.2 | Phân tích hiện trạng tài nguyên | 3h | 2011-06-24 13:00 | 2011-06-24 16:00 |  |  |  | 2011-06-23 09:00 | 2011-06-23 12:00 | 3h | 0d |  | start no earlier than 2011-06-23 17:00 | N.T.Khánh | 3h |  | 6 | 6 |  |
| 26 | 1.3.3 | Viết đặc tả chức năng trang web | 6h | 2011-06-24 16:00 | 2011-06-27 14:00 | 25 |  |  | 2011-06-23 13:00 | 2011-06-24 10:00 | 6h | 0d |  | start no earlier than 2011-06-23 17:00 | N.T.Khánh | 6h |  | 12 | 12 |  |
| 27 | 1.3.4 | Kiểm tra lại phân tích | 3h | 2011-06-27 14:00 | 2011-06-27 17:00 | 26 |  |  | 2011-06-24 10:00 | 2011-06-24 14:00 | 3h | 0d |  |  | N.T.Hiệp | 3h |  | 6 | 6 |  |
| 28 | 1.3.5 | Thiết kế tổng thể | 3h | 2011-06-28 08:00 | 2011-06-28 11:00 | 27 |  |  | 2011-06-24 14:00 | 2011-06-24 17:00 | 3h | 0d |  |  | N.T.Hiệp; N.T.Nhân | 6h |  | 10.5 | 10.5 |  |

| ID | WBS | Task | Type | Duration | Start | Finish | Predecessors | Baseline start | Baseline finish | Baseline duration | Total slack | Resources | Work | Cost | Baseline cost |
| --- | --- | --- | --- | --- | --- | --- | --- | --- | --- | --- | --- | --- | --- | --- | --- |
| 29 | 1.4 | **Thiết kế** |  | 9.75d | 2011-06-29 11:00 | 2011-07-13 09:00 | 20FS+1d | 2011-06-28 08:00 | 2011-07-11 15:00 | 9.75d | 0d | Giấy [25000%] | 184h | 334.5 | 334.5 |
| 30 | 1.4.1 | **Thiết kế tổng thể trang web** |  | 5.12d | 2011-06-29 11:00 | 2011-07-06 12:00 |  | 2011-06-28 08:00 | 2011-07-05 09:00 | 5.12d | 0d |  | 144h | 252 | 252 |
| 31 | 1.4.1.1 | Thiết kế giao diện |  | 4d | 2011-06-29 11:00 | 2011-07-05 12:00 |  | 2011-06-28 08:00 | 2011-07-04 09:00 | 4d | 5.62d | N.T.Hiệp; N.Q.Duy | 64h | 112 | 112 |
| 32 | 1.4.1.2 | Thiết kế thành phần xử lý |  | 5d | 2011-06-29 11:00 | 2011-07-06 12:00 |  | 2011-06-28 08:00 | 2011-07-05 09:00 | 5d | 0d | N.T.Khánh; N.T.Nhân | 80h | 140 | 140 |
| 33 | 1.4.2 | Viết đặc tả thiết kế |  | 2d | 2011-07-06 13:00 | 2011-07-08 14:00 | 32 | 2011-07-05 09:00 | 2011-07-07 10:00 | 2d | 0d | N.T.Hiệp | 16h | 32 | 32 |
| 34 | 1.4.3 | Viết kế hoạch kiểm thử |  | 2d | 2011-07-08 14:00 | 2011-07-12 14:00 | 33 | 2011-07-07 10:00 | 2011-07-11 10:00 | 2d | 0d | N.T.Hiệp | 16h | 32 | 32 |
| 35 | 1.4.4 | Kiểm tra ước lượng |  | 4h | 2011-07-12 14:00 | 2011-07-13 09:00 | 34 | 2011-07-11 10:00 | 2011-07-11 15:00 | 4h | 0d | N.T.Hiệp; N.T.Khánh | 8h | 16 | 16 |
| 36 | 1.5 | **Thực hiện** |  | 15.12d | 2011-07-13 09:00 | 2011-08-03 10:00 | 29 | 2011-07-11 15:00 | 2011-08-01 16:00 | 15.12d | 0d | Giấy [10000%] | 248h | 587 | 587 |
| 37 | 1.5.1 | Thuê Host | milestone | 0d | 2011-07-13 09:00 | 2011-07-13 09:00 |  | 2011-07-11 15:00 | 2011-07-11 15:00 | 0d | 15.12d | Host |  | 150 | 150 |
| 38 | 1.5.2 | Mua tên miền | milestone | 0d | 2011-07-13 09:00 | 2011-07-13 09:00 |  | 2011-07-11 15:00 | 2011-07-11 15:00 | 0d | 15.12d | Tên miền |  | 10 | 10 |
| 39 | 1.5.3 | Nhận bản dịch Tiếng Anh | milestone | 0d | 2011-07-13 09:00 | 2011-07-13 09:00 |  | 2011-07-11 15:00 | 2011-07-11 15:00 | 0d | 15.12d | Bản dịch tiếng anh |  | 30 | 30 |
| 40 | 1.5.4 | **Xây dựng giao diện** |  | 7.12d | 2011-07-13 09:00 | 2011-07-22 10:00 |  | 2011-07-11 15:00 | 2011-07-20 16:00 | 7.12d | 0d |  | 112h | 172 | 172 |
| 41 | 1.5.4.1 | Xây dựng trang HTML |  | 4d | 2011-07-13 09:00 | 2011-07-19 10:00 |  | 2011-07-11 15:00 | 2011-07-15 16:00 | 4d | 0d | N.T.Nhân | 32h | 48 | 48 |
| 42 | 1.5.4.2 | Chỉnh sửa hình hảnh |  | 8h | 2011-07-13 09:00 | 2011-07-14 09:00 |  | 2011-07-11 15:00 | 2011-07-12 15:00 | 8h | 6.12d | N.T.Khánh | 8h | 16 | 16 |
| 43 | 1.5.4.3 | Biên tập nội dung |  | 3d | 2011-07-13 09:00 | 2011-07-19 10:00 |  | 2011-07-11 15:00 | 2011-07-15 15:00 | 3d | 3d | N.Q.Duy | 24h | 36 | 36 |
| 44 | 1.5.4.4 | Kết hợp trang HTML hoàn chình |  | 3d | 2011-07-19 10:00 | 2011-07-22 10:00 | 41 | 2011-07-15 16:00 | 2011-07-20 16:00 | 3d | 0d | N.T.Nhân; N.Q.Duy | 48h | 72 | 72 |
| 45 | 1.5.5 | **Xây dựng các module xử lý** |  | 3d | 2011-07-22 10:00 | 2011-07-27 10:00 | 40 | 2011-07-20 16:00 | 2011-07-25 16:00 | 3d | 0d |  | 64h | 108 | 108 |
| 46 | 1.5.5.1 | Module liên kết với Portal Office |  | 2d | 2011-07-22 10:00 | 2011-07-27 10:00 |  | 2011-07-20 16:00 | 2011-07-25 16:00 | 2d | 0d | N.T.Hiệp; N.Q.Duy | 32h | 56 | 56 |
| 47 | 1.5.5.2 | Module media trên web |  | 2d | 2011-07-22 10:00 | 2011-07-26 10:00 |  | 2011-07-20 16:00 | 2011-07-22 16:00 | 2d | 1d | N.T.Nhân | 16h | 24 | 24 |
| 48 | 1.5.5.3 | Module gửi liên hệ từ khách hàng |  | 1d | 2011-07-26 10:00 | 2011-07-27 10:00 |  | 2011-07-22 16:00 | 2011-07-25 16:00 | 1d | 0d | N.T.Nhân | 8h | 12 | 12 |
| 49 | 1.5.5.4 | Module quảng cáo sản phẩm |  | 1d | 2011-07-22 10:00 | 2011-07-25 10:00 |  | 2011-07-20 16:00 | 2011-07-21 16:00 | 1d | 2d | N.T.Khánh | 8h | 16 | 16 |
| 50 | 1.5.6 | Hoàn thiện trang web |  | 3d | 2011-07-27 10:00 | 2011-08-01 10:00 | 45 | 2011-07-25 16:00 | 2011-07-28 16:00 | 3d | 0d | N.Q.Duy; N.T.Nhân | 48h | 72 | 72 |
| 51 | 1.5.7 | Kiểm tra chức năng trang web |  | 1d | 2011-08-01 10:00 | 2011-08-02 10:00 | 50 | 2011-07-28 16:00 | 2011-07-29 16:00 | 1d | 0d | N.T.Hiệp; N.T.Khánh | 16h | 32 | 32 |
| 52 | 1.5.8 | Viết báo cáo xây dựng trang web |  | 1d | 2011-08-02 10:00 | 2011-08-03 10:00 | 51 | 2011-07-29 16:00 | 2011-08-01 16:00 | 1d | 0d | N.T.Nhân | 8h | 12 | 12 |

| ID | WBS | Task | Duration | Start | Finish | Predecessors | Baseline start | Baseline finish | Baseline duration | Total slack | Resources | Work | Cost | Baseline cost |
| --- | --- | --- | --- | --- | --- | --- | --- | --- | --- | --- | --- | --- | --- | --- |
| 53 | 1.6 | **Kiểm thử** | 1.5d | 2011-08-03 10:00 | 2011-08-04 15:00 | 36 | 2011-08-01 16:00 | 2011-08-03 11:00 | 1.5d | 0d | Giấy [6000%] | 20h | 30.6 | 30.6 |
| 54 | 1.6.1 | Kiểm tra họa động trang web trên Host | 1d | 2011-08-03 10:00 | 2011-08-04 10:00 |  | 2011-08-01 16:00 | 2011-08-02 16:00 | 1d | 0d | N.T.Nhân; N.Q.Duy | 16h | 24 | 24 |
| 55 | 1.6.2 | Viết báo cáo kiểm thử | 4h | 2011-08-04 10:00 | 2011-08-04 15:00 | 54 | 2011-08-02 16:00 | 2011-08-03 11:00 | 4h | 0d | N.T.Nhân | 4h | 6 | 6 |
| 56 | 1.7 | **Kiểm thử chấp nhận** | 2.5d | 2011-08-04 15:00 | 2011-08-09 10:00 | 53 | 2011-08-03 11:00 | 2011-08-05 16:00 | 2.5d | 0d |  | 4h | 8 | 8 |
| 57 | 1.7.1 | Khách hàng kiểm thử trang Web | 2d | 2011-08-04 15:00 | 2011-08-08 15:00 |  | 2011-08-03 11:00 | 2011-08-05 11:00 | 2d | 0d |  |  |  |  |
| 58 | 1.7.2 | Biên bản kết quả kiểm thử | 4h | 2011-08-08 15:00 | 2011-08-09 10:00 | 57 | 2011-08-05 11:00 | 2011-08-05 16:00 | 4h | 0d | N.T.Khánh | 4h | 8 | 8 |
| 59 | 1.8 | **Vận hành** | 3.5d | 2011-08-09 10:00 | 2011-08-12 15:00 | 56 | 2011-08-05 16:00 | 2011-08-11 11:00 | 3.5d | 0d | Giấy [10000%] | 40h | 77 | 77 |
| 60 | 1.8.1 | Viết tài liệu chuyển giao | 1d | 2011-08-09 10:00 | 2011-08-10 10:00 |  | 2011-08-05 16:00 | 2011-08-08 16:00 | 1d | 0d | N.Q.Duy | 8h | 12 | 12 |
| 61 | 1.8.2 | Đào tạo người dùng | 1d | 2011-08-10 10:00 | 2011-08-11 10:00 | 60 | 2011-08-08 16:00 | 2011-08-09 16:00 | 1d | 0d | N.T.Khánh | 8h | 16 | 16 |
| 62 | 1.8.3 | Kiểm toán dự án | 1d | 2011-08-09 10:00 | 2011-08-10 10:00 |  | 2011-08-05 16:00 | 2011-08-08 16:00 | 1d | 2.5d | N.T.Hiệp | 8h | 16 | 16 |
| 63 | 1.8.4 | Bàn giao dự án | 1d | 2011-08-11 10:00 | 2011-08-12 10:00 | 61 | 2011-08-09 16:00 | 2011-08-10 16:00 | 1d | 0d | N.T.Hiệp | 8h | 16 | 16 |
| 64 | 1.8.5 | Báo cáo tổng kết dự án | 4h | 2011-08-12 10:00 | 2011-08-12 15:00 | 63 | 2011-08-10 16:00 | 2011-08-11 11:00 | 4h | 0d | N.T.Khánh; N.T.Hiệp | 8h | 16 | 16 |
